# 智能风场管里1

Schedule from MS Project, 2020-12-01 to 2021-05-31, A marks actual dates.
www.nicowen.cn

## Calendars

- 标准: Mon-Fri 08:00-12:00, 13:00-17:00; Sat-Sun off.

## Resources

| Resource |
| --- |
| 李逵扬 |
| 王改建 |
| 贺子光 |
| 张若愚 |
| 于源政 |
| 高江泽 |
| 叶恒富 |
| 刘贞贞 |
| 韦汉辉 |
| 王毅龙 |

## Schedule

| ID | WBS | Task | Type | Duration | Start | Finish | Predecessors | Complete | Remaining | Total slack | Free slack | Constraint | Resources | Work | Actual work |
| --- | --- | --- | --- | --- | --- | --- | --- | --- | --- | --- | --- | --- | --- | --- | --- |
| 1 | 1 | **风机在线诊断云平台** |  | 130d? | 2020-12-01 A | 2021-05-31 |  | 23% | 100.72d? |  |  |  |  | 2777h | 527h |
| 2 | 1.1 | **风机在线诊断云平台** |  | 130d? | 2020-12-01 A | 2021-05-31 |  | 23% | 100.72d? |  |  |  |  | 2777h | 527h |
| 3 | 1.1.1 | **项目规划** |  | 30.12d | 2020-12-01 A | 2021-01-11 |  | 69% | 9.22d |  |  |  |  | 447h | 279h |
| 4 | 1.1.1.1 | **确定项目范围** |  | 9d | 2020-12-01 A | 2020-12-11 |  | 86% | 1.29d |  |  |  |  | 56h | 48h |
| 5 | 1.1.1.1.1 | 现状调研 |  | 2d | 2020-12-01 A | 2020-12-03 A |  | 100% |  |  |  |  | 贺子光 | 16h | 16h |
| 6 | 1.1.1.1.2 | 收集需求 |  | 3d | 2020-12-04 A | 2020-12-09 | 5 | 67% | 1d | 123.88d |  | finish no earlier than 2020-12-08 | 贺子光 | 24h | 16h |
| 7 | 1.1.1.1.3 | 定义范围并进行分解 |  | 2d | 2020-12-09 A | 2020-12-11 A | 6 | 100% |  |  |  | finish no earlier than 2019-02-28 | 贺子光 | 16h | 16h |
| 8 | 1.1.1.2 | **确定项目时间** |  | 7d | 2020-12-14 A | 2020-12-23 |  | 67% | 2.33d |  |  |  |  | 55h | 39h |
| 9 | 1.1.1.2.1 | 进度整体规划 |  | 1d | 2020-12-14 A | 2020-12-15 A |  | 100% |  |  |  | finish no earlier than 2020-12-15 | 贺子光 | 8h | 8h |
| 10 | 1.1.1.2.2 | 定义工作顺序 |  | 2d | 2020-12-15 A | 2020-12-17 | 9 | 50% | 1d | 2.12d | 0.12d | finish no earlier than 2020-12-17 | 贺子光 | 16h | 8h |
| 11 | 1.1.1.2.3 | 制定进度计划 | manual | 3d | 2020-12-18 A | 2020-12-23 | 10 | 67% | 1d |  |  | start no earlier than 2020-12-18 | 贺子光 | 31h | 23h |
| 12 | 1.1.1.3 | **人力、沟通、风险管理** |  | 3d | 2020-12-23 A | 2020-12-25 A |  | 100% |  |  |  |  |  | 16h | 16h |
| 13 | 1.1.1.3.1 | 确定项目组织 |  | 1d | 2020-12-23 A | 2020-12-24 A |  | 100% |  |  |  |  | 贺子光 | 8h | 8h |
| 14 | 1.1.1.3.2 | 风险分析与规划风险应对 |  | 1d | 2020-12-24 A | 2020-12-25 A |  | 100% |  |  |  |  | 贺子光 | 8h | 8h |
| 15 | 1.1.1.4 | **系统实现方案确定及概要设计** |  | 11d | 2020-12-28 A | 2021-01-11 |  | 65% | 3.88d |  |  |  |  | 320h | 176h |
| 16 | 1.1.1.4.1 | 后台管理及业务流程设计方案 | manual | 4d | 2020-12-28 | 2021-01-01 |  |  |  |  |  |  | 张若愚 | 32h |  |
| 17 | 1.1.1.4.2 | 监控系统导出数据功能设计 |  | 4d | 2020-12-28 A | 2021-01-01 A |  | 100% |  |  |  | start no earlier than 2019-03-11 | 李逵扬 | 32h | 32h |
| 18 | 1.1.1.4.3 | 预警模型分析设计方案 |  | 4d | 2020-12-28 A | 2021-01-01 A |  | 100% |  |  |  | start no earlier than 2019-03-11 | 刘贞贞 | 32h | 32h |
| 19 | 1.1.1.4.4 | 风场KPI指标计算方案 |  | 4d | 2020-12-28 A | 2021-01-01 A |  | 100% |  |  |  | start no earlier than 2019-03-11 | 高江泽 | 32h | 32h |
| 20 | 1.1.1.4.5 | 故障频次统计设计方案 |  | 4d | 2020-12-28 A | 2021-01-01 A |  | 100% |  |  |  | start no earlier than 2019-03-11 | 张若愚 | 32h | 32h |
| 21 | 1.1.1.4.6 | 主控版本监测与数据一致性设计方案 |  | 4d | 2020-12-28 A | 2021-01-01 A |  | 100% |  |  |  | start no earlier than 2019-03-11 | 李逵扬; 王毅龙 | 32h | 32h |
| 22 | 1.1.1.4.7 | 系统整体框架、布局、平台架构确定 |  | 6d | 2020-12-28 A | 2021-01-05 |  |  | 6d | 2d | 0d | start no earlier than 2019-03-19 | 贺子光; 叶恒富 | 96h |  |
| 23 | 1.1.1.4.8 | 系统概要设计 |  | 4d | 2021-01-05 A | 2021-01-11 | 22 | 50% | 2d | 100.88d |  | finish no earlier than 2021-01-08 | 贺子光 | 32h | 16h |
| 24 | 1.1.2 | **平台及环境准备** |  | 11d | 2021-01-11 A | 2021-01-25 |  | 88% | 1.38d |  |  |  |  | 82h | 64h |
| 25 | 1.1.2.1 | **项目总部环境准备** |  | 7d | 2021-01-11 A | 2021-01-19 |  | 78% | 1.57d |  |  |  |  | 50h | 32h |
| 26 | 1.1.2.1.1 | 测试服务器确定 |  | 1d | 2021-01-11 A | 2021-01-12 A |  | 100% |  |  |  | start no earlier than 2019-03-18 | 叶恒富 | 8h | 8h |
| 27 | 1.1.2.1.2 | 开发环境安装调试及性能调优 |  | 1d | 2021-01-12 A | 2021-01-13 A |  | 100% |  |  |  |  | 叶恒富 | 8h | 8h |
| 28 | 1.1.2.1.3 | 测试平台及数据库搭建 | manual | 3d | 2021-01-14 A | 2021-01-19 | 27 | 63% | 1.12d |  |  |  | 叶恒富; 贺子光 | 34h | 16h |

| ID | WBS | Task | Type | Duration | Start | Finish | Predecessors | Complete | Remaining | Actual start | Actual finish | Constraint | Resources | Work | Actual work |
| --- | --- | --- | --- | --- | --- | --- | --- | --- | --- | --- | --- | --- | --- | --- | --- |
| 29 | 1.1.2.2 | **模拟数据准备** |  | 5d | 2021-01-19 | 2021-01-25 | 4 | 100% |  | 2021-01-18 | 2021-01-22 |  |  | 32h | 32h |
| 30 | 1.1.2.2.1 | 模拟实时原始数据 |  | 1d | 2021-01-18 A | 2021-01-19 A | 28 | 100% |  |  |  | start no earlier than 2019-04-01 | 李逵扬 | 8h | 8h |
| 31 | 1.1.2.2.2 | 模拟故障数据 |  | 1d | 2021-01-19 A | 2021-01-20 A | 30 | 100% |  |  |  | finish no earlier than 2019-04-12 | 李逵扬 | 8h | 8h |
| 32 | 1.1.2.2.3 | 模拟配置等静态数据 |  | 1d | 2021-01-20 A | 2021-01-21 A | 30 | 100% |  |  |  | finish no earlier than 2015-05-22 | 叶恒富 | 8h | 8h |
| 33 | 1.1.2.2.4 | 模拟指标、报表等历史数据 |  | 1d | 2021-01-21 A | 2021-01-22 A | 32 | 100% |  |  |  | finish no earlier than 2015-06-12 | 叶恒富 | 8h | 8h |
| 34 | 1.1.3 | **UI设计** |  | 13d | 2021-01-20 | 2021-02-05 |  |  |  |  |  |  |  | 208h |  |
| 35 | 1.1.3.1 | 系统首页设计 | manual | 3d | 2021-01-20 | 2021-01-22 |  |  |  |  |  |  | 于源政; 贺子光 | 48h |  |
| 36 | 1.1.3.2 | 管理人员访问页面设计（包括查看所有用户的数据上传情况，数据分析进度，分析结果，编辑结果，预览报告等功能） | manual | 5d | 2021-01-25 | 2021-01-29 |  |  |  |  |  |  | 于源政; 贺子光 | 80h |  |
| 37 | 1.1.3.3 | 用户访问页面设计（包括查看数据上传信息，任务执行信息，报告等功能） | manual | 5d | 2021-02-01 | 2021-02-05 |  |  |  |  |  |  | 于源政; 贺子光 | 80h |  |
| 38 | 1.1.4 | **系统开发** |  | 50d? | 2021-01-20 A | 2021-03-31 |  | 14% | 43.2d? |  |  |  |  | 1616h | 184h |
| 39 | 1.1.4.1 | **监控系统改造** |  | 15d | 2021-01-20 A | 2021-02-10 | 26 | 27% | 11d |  |  |  |  | 120h | 32h |
| 40 | 1.1.4.1.1 | 标签点时序数据导出 | manual | 2d | 2021-01-20 | 2021-01-22 |  |  |  |  |  |  | 李逵扬 | 16h |  |
| 41 | 1.1.4.1.2 | 故障频次数据导出 | manual | 1d | 2021-01-22 A | 2021-01-22 A |  | 100% |  |  |  |  | 李逵扬 | 8h | 8h |
| 42 | 1.1.4.1.3 | 主控版本信息导出 | manual | 3d | 2021-01-25 | 2021-01-27 |  |  |  |  |  |  | 李逵扬 | 24h |  |
| 43 | 1.1.4.1.4 | 风机KPI数据导出 | manual | 1d | 2021-01-28 | 2021-01-28 |  |  |  |  |  |  | 李逵扬 | 8h |  |
| 44 | 1.1.4.1.5 | 导出数据汇总，保存 | manual | 5d | 2021-01-29 | 2021-02-05 | 40, 41, 42, 43 |  |  |  |  |  | 李逵扬 | 40h |  |
| 45 | 1.1.4.1.6 | 测试功能 | manual | 3d | 2021-02-08 A | 2021-02-10 A | 44 | 100% |  |  |  |  | 李逵扬; 贺子光 | 24h | 24h |
| 46 | 1.1.4.2 | **模型分析功能开发** |  | 40d? | 2021-01-25 | 2021-03-22 | 24 |  |  |  |  |  |  | 304h |  |
| 47 | 1.1.4.2.1 | 模型选择 | manual | 5d | 2021-01-25 | 2021-02-01 |  |  |  |  |  |  | 刘贞贞 | 40h |  |
| 48 | 1.1.4.2.2 | 模型开发 | manual | 20d | 2021-02-02 | 2021-03-02 |  |  |  |  |  |  | 刘贞贞 | 160h |  |
| 49 | 1.1.4.2.3 | 模型诊断处理结果 | manual | 13d | 2021-03-03 | 2021-03-22 |  |  |  |  |  |  | 刘贞贞 | 104h |  |
| 50 | 1.1.4.3 | **KPI指标计算功能** |  | 30d | 2021-01-25 | 2021-03-05 | 24 |  |  |  |  |  |  | 216h |  |
| 51 | 1.1.4.3.1 | 风机KPI指标计算 | manual | 5d | 2021-01-25 | 2021-02-01 |  |  |  |  |  |  | 高江泽 | 40h |  |
| 52 | 1.1.4.3.2 | 风场KPI指标计算 | manual | 12d | 2021-02-02 | 2021-02-18 |  |  |  |  |  |  | 高江泽 | 96h |  |
| 53 | 1.1.4.3.3 | 故障频次统计 | manual | 10d | 2021-02-19 | 2021-03-05 |  |  |  |  |  |  | 张若愚 | 80h |  |

| ID | WBS | Task | Type | Duration | Start | Finish | Predecessors | Complete | Remaining | Total slack | Free slack | Constraint | Resources | Work | Actual work |
| --- | --- | --- | --- | --- | --- | --- | --- | --- | --- | --- | --- | --- | --- | --- | --- |
| 54 | 1.1.4.4 | **主控版本监测与数据一致性** |  | 33d | 2021-01-25 | 2021-03-10 | 24 |  |  |  |  |  |  | 240h |  |
| 55 | 1.1.4.4.1 | 标签点选定 | manual | 5d | 2021-01-25 | 2021-02-01 |  |  |  |  |  |  | 贺子光; 王改建 | 80h |  |
| 56 | 1.1.4.4.2 | 标签点取值范围确认 | manual | 5d | 2021-02-02 | 2021-02-09 |  |  |  |  |  |  | 贺子光; 王改建 | 80h |  |
| 57 | 1.1.4.4.3 | 数据一致性程序开发 | manual | 10d | 2021-02-10 | 2021-02-24 |  |  |  |  |  |  | 贺子光 | 80h |  |
| 58 | 1.1.4.5 | **后台管理功能开发** |  | 50d | 2021-01-20 A | 2021-03-31 |  | 28% | 36.23d |  |  |  |  | 736h | 152h |
| 59 | 1.1.4.5.1 | FTP服务器接收文件 |  | 10d | 2021-01-20 | 2021-02-03 |  |  |  | 83.88d |  |  | 张若愚 | 80h |  |
| 60 | 1.1.4.5.2 | **解析数据并入库** |  | 5d | 2021-01-20 | 2021-01-27 |  |  |  |  |  |  |  | 120h |  |
| 61 | 1.1.4.5.2.1 | 风机标签点时序数据入IB库 |  | 5d | 2021-01-20 | 2021-01-27 |  |  |  | 88.88d |  |  | 叶恒富; 贺子光 | 80h |  |
| 62 | 1.1.4.5.2.2 | 其他导出数据入关系库 |  | 5d | 2021-01-20 | 2021-01-27 |  |  |  | 88.88d |  |  | 张若愚 | 40h |  |
| 63 | 1.1.4.5.3 | 用户角色权限管理模块 | manual | 6d | 2021-01-28 | 2021-02-04 |  |  |  |  |  |  | 韦汉辉; 张若愚 | 96h |  |
| 64 | 1.1.4.5.4 | 分析计算调度程序 |  | 10d | 2021-02-05 A | 2021-02-19 |  | 80% | 2d | 71.88d |  |  | 张若愚 | 80h | 64h |
| 65 | 1.1.4.5.5 | **分析结果生成** |  | 20d | 2021-02-22 A | 2021-03-22 | 29 | 58% | 8.42d |  |  |  |  | 192h | 88h |
| 66 | 1.1.4.5.5.1 | 分析结果展示、编辑 |  | 9d | 2021-02-22 A | 2021-03-05 |  | 89% | 1d | 61.88d |  | finish no earlier than 2021-03-04 | 张若愚 | 72h | 64h |
| 67 | 1.1.4.5.5.2 | 分析报告生成 |  | 5d | 2021-03-08 A | 2021-03-15 |  | 60% | 2d | 55.88d |  |  | 张若愚 | 40h | 24h |
| 68 | 1.1.4.5.5.3 | 分析结果通知，查看功能 |  | 5d | 2021-03-15 A | 2021-03-22 |  |  | 5d | 50.88d |  | finish no earlier than 2021-03-22 | 韦汉辉; 张若愚 | 80h |  |
| 69 | 1.1.4.5.6 | 结合各个分析模块进行联调 | manual | 7d | 2021-03-22 | 2021-03-30 |  |  |  |  |  |  | 张若愚; 贺子光 | 112h |  |
| 70 | 1.1.4.5.7 | 小程序通知模型计算完成信息 | manual | 7d | 2021-03-22 | 2021-03-31 |  |  |  |  |  |  | 韦汉辉 | 56h |  |
| 71 | 1.1.5 | **系统上线** |  | 43d | 2021-04-01 | 2021-05-31 |  |  |  |  |  |  |  | 424h |  |
| 72 | 1.1.5.1 | **硬件环境搭建** |  | 4.88d | 2021-04-01 | 2021-04-07 |  |  |  | 31d |  |  |  | 32h |  |
| 73 | 1.1.5.1.1 | 确认硬件配置性能和网络带宽需求 |  | 1d | 2021-04-01 | 2021-04-02 |  |  |  | 31.88d | 0.88d | finish no earlier than 2015-07-10 | 叶恒富 | 8h |  |
| 74 | 1.1.5.1.2 | 确认数据库接口及网关测试 |  | 1d | 2021-04-05 | 2021-04-05 | 73 |  |  | 31d | 0d | finish no earlier than 2021-04-05 | 叶恒富 | 8h |  |
| 75 | 1.1.5.1.3 | 连通性及压力测试 |  | 2d | 2021-04-06 | 2021-04-07 | 74 |  |  | 31d | 0.12d | finish no earlier than 2021-04-07 | 叶恒富 | 16h |  |
| 76 | 1.1.5.2 | **平台部署** |  | 30d | 2021-04-08 | 2021-05-20 |  |  |  |  |  |  |  | 296h |  |
| 77 | 1.1.5.2.1 | 数据库安装及调试 |  | 2d | 2021-04-08 | 2021-04-12 | 75 |  |  | 30.88d | 0d | start no earlier than 2021-04-08 | 叶恒富 | 16h |  |
| 78 | 1.1.5.2.2 | 平台部署上线调试 |  | 2d | 2021-04-12 | 2021-04-14 |  |  |  | 0.88d | 0d | start no earlier than 2021-04-12 | 张若愚 | 16h |  |
| 79 | 1.1.5.2.3 | 数据库数据质量测试 |  | 5d | 2021-04-12 | 2021-04-19 | 77 |  |  | 30.88d |  |  | 叶恒富; 李逵扬 | 80h |  |
| 80 | 1.1.5.2.4 | 系统操作文档 |  | 2d | 2021-04-14 | 2021-04-16 | 78 |  |  | 31.88d |  |  | 贺子光 | 16h |  |
| 81 | 1.1.5.2.5 | 用户软件功能测试 |  | 6d | 2021-04-14 | 2021-04-22 | 78 |  |  | 0.88d | 0d | start no earlier than 2021-04-14 | 张若愚 | 48h |  |
| 82 | 1.1.5.2.6 | 系统试运行 |  | 15d | 2021-04-22 | 2021-05-13 | 81 |  |  | 0.88d | 0d |  | 贺子光 | 120h |  |

| ID | WBS | Task | Duration | Start | Finish | Predecessors | Total slack | Free slack | Resources | Work |
| --- | --- | --- | --- | --- | --- | --- | --- | --- | --- | --- |
| 83 | 1.1.5.3 | **验收及应用支持** | 13d | 2021-05-13 | 2021-05-31 |  |  |  |  | 96h |
| 84 | 1.1.5.3.1 | 系统验收 | 5d | 2021-05-13 | 2021-05-20 | 82 | 0.88d | 0d | 贺子光 | 40h |
| 85 | 1.1.5.3.2 | 项目总结 | 3d | 2021-05-20 | 2021-05-25 | 84 | 0.88d | 0d | 贺子光 | 24h |
| 86 | 1.1.5.3.3 | 结项验收 | 4d | 2021-05-25 | 2021-05-31 | 85 | 0.88d |  | 贺子光 | 32h |
